How a schedule from an exported table changed from version to version. A marks actual dates.

## Version 1 (saved 2026-08-29)

Note of the change: feat: add FieldLine golden demo environment

| ID | Task | Start | Finish |
| --- | --- | --- | --- |
| ACT-A01 | Unit 4 Site Clearing & Grubbing | 2026-08-01 | 2026-08-10 |
| ACT-A02 | Unit 4 Site Rough Grading & Terracing | 2026-08-05 | 2026-08-20 |
| ACT-A03 | Stormwater Retention Basin Excavation | 2026-08-10 | 2026-08-30 |
| ACT-A04 | Perimeter Access Road Sub-base Compaction | 2026-08-15 | 2026-09-05 |
| ACT-A05 | Civil Site Preparation Acceptance | 2026-08-30 | 2026-08-30 |
| ACT-B01 | North Tank Farm Foundation Excavation | 2026-08-05 | 2026-08-18 |
| ACT-B02 | Crude Pump Foundation Piling Works | 2026-08-10 | 2026-08-24 |
| ACT-B03 | Substation Heavy Equipment Mat Foundation | 2026-08-12 | 2026-08-31 |
| ACT-B04 | Compressor House Deep Foundation Piers | 2026-08-15 | 2026-09-10 |
| ACT-B05 | Foundation Piling Inspection Sign-Off | 2026-09-02 | 2026-09-02 |
| ACT-C01 | Pipe Rack PR-07 Structural Steel Erection | 2026-08-10 | 2026-08-29 |
| ACT-C02 | Main Pipe Bridge Column Splice & Bolting | 2026-08-18 | 2026-09-05 |
| ACT-C03 | Compressor Shelter Superstructure Frame | 2026-08-20 | 2026-09-15 |
| ACT-C04 | Substation Multi-Tier Cable Support Structure | 2026-08-22 | 2026-09-10 |
| ACT-C05 | Major Steel Structure Erection Complete | 2026-09-08 | 2026-09-08 |
| ACT-D01 | Cooling Water Underground Header Installation | 2026-08-01 | 2026-08-16 |
| ACT-D02 | Process Pipe Rack Carbon Steel Spooling | 2026-08-12 | 2026-08-25 |
| ACT-D03 | High Pressure Steam Header Tie-in Welds | 2026-08-18 | 2026-08-30 |
| ACT-D04 | Crude Feedstock Line Flange Assembly | 2026-08-20 | 2026-09-12 |
| ACT-D05 | Flare Header Stainless Steel Line Welding | 2026-08-24 | 2026-09-15 |
| ACT-E01 | Electrical Substation Civil & Trenching Works | 2026-08-02 | 2026-08-15 |
| ACT-E02 | MCC Room Cable Tray Installation & Earthing | 2026-08-15 | 2026-09-02 |
| ACT-E03 | High Voltage Feeder Cable Pulling Section 1 | 2026-08-20 | 2026-09-08 |
| ACT-E04 | Instrument Air Header Distribution Tubing | 2026-08-22 | 2026-09-12 |
| ACT-E05 | Control Room Marshalling Cabinet Termination | 2026-08-25 | 2026-09-15 |
| ACT-F01 | Cooling Water Header Flush & Hydrostatic Test | 2026-08-16 | 2026-08-26 |
| ACT-F02 | Unit 4 Hydrotest Package A Pre-Commissioning | 2026-08-24 | 2026-09-08 |
| ACT-F03 | Emergency Shutdown Loop Logic Verification | 2026-08-26 | 2026-09-14 |
| ACT-F04 | Instrument Air Header Leak Testing & Certification | 2026-08-28 | 2026-09-18 |
| ACT-F05 | Unit 4 Ready for Startup (RFSU) Milestone | 2026-09-10 | 2026-09-10 |

## Version 2 (saved 2026-09-13)

Note of the change: feat(demo): refresh Golden Demo schedule horizon and as-of date to 2026-09-13

Last finish 2026-09-18 → 2026-11-25 (+68d).

Changed:

| ID | Task | Start | Finish |
| --- | --- | --- | --- |
| ACT-A02 | Unit 4 Site Rough Grading & Terracing |  | 2026-08-20 → 2026-09-30 (+41d) |
| ACT-A03 | Stormwater Retention Basin Excavation |  | 2026-08-30 → 2026-09-28 (+29d) |
| ACT-A04 | Perimeter Access Road Sub-base Compaction |  | 2026-09-05 → 2026-10-08 (+33d) |
| ACT-A05 | Civil Site Preparation Acceptance | 2026-08-30 → 2026-09-25 (+26d) | 2026-08-30 → 2026-09-25 (+26d) |
| ACT-B02 | Crude Pump Foundation Piling Works |  | 2026-08-24 → 2026-09-24 (+31d) |
| ACT-B03 | Substation Heavy Equipment Mat Foundation |  | 2026-08-31 → 2026-09-28 (+28d) |
| ACT-B04 | Compressor House Deep Foundation Piers |  | 2026-09-10 → 2026-10-10 (+30d) |
| ACT-B05 | Foundation Piling Inspection Sign-Off | 2026-09-02 → 2026-09-27 (+25d) | 2026-09-02 → 2026-09-27 (+25d) |
| ACT-C01 | Pipe Rack PR-07 Structural Steel Erection |  | 2026-08-29 → 2026-10-02 (+34d) |
| ACT-C02 | Main Pipe Bridge Column Splice & Bolting |  | 2026-09-05 → 2026-10-05 (+30d) |
| ACT-C03 | Compressor Shelter Superstructure Frame |  | 2026-09-15 → 2026-10-22 (+37d) |
| ACT-C04 | Substation Multi-Tier Cable Support Structure |  | 2026-09-10 → 2026-10-15 (+35d) |
| ACT-C05 | Major Steel Structure Erection Complete | 2026-09-08 → 2026-10-25 (+47d) | 2026-09-08 → 2026-10-25 (+47d) |
| ACT-D02 | Process Pipe Rack Carbon Steel Spooling |  | 2026-08-25 → 2026-09-08 (+14d) |
| ACT-D03 | High Pressure Steam Header Tie-in Welds |  | 2026-08-30 → 2026-10-02 (+33d) |
| ACT-D04 | Crude Feedstock Line Flange Assembly |  | 2026-09-12 → 2026-10-18 (+36d) |
| ACT-D05 | Flare Header Stainless Steel Line Welding |  | 2026-09-15 → 2026-11-05 (+51d) |
| ACT-E02 | MCC Room Cable Tray Installation & Earthing |  | 2026-09-02 → 2026-09-30 (+28d) |
| ACT-E03 | High Voltage Feeder Cable Pulling Section 1 |  | 2026-09-08 → 2026-10-12 (+34d) |
| ACT-E04 | Instrument Air Header Distribution Tubing |  | 2026-09-12 → 2026-10-18 (+36d) |
| ACT-E05 | Control Room Marshalling Cabinet Termination |  | 2026-09-15 → 2026-11-15 (+61d) |
| ACT-F01 | Cooling Water Header Flush & Hydrostatic Test |  | 2026-08-26 → 2026-09-25 (+30d) |
| ACT-F02 | Unit 4 Hydrotest Package A Pre-Commissioning |  | 2026-09-08 → 2026-10-25 (+47d) |
| ACT-F03 | Emergency Shutdown Loop Logic Verification |  | 2026-09-14 → 2026-11-25 (+72d) |
| ACT-F04 | Instrument Air Header Leak Testing & Certification | 2026-08-28 → 2026-09-20 (+23d) | 2026-09-18 → 2026-10-15 (+27d) |
| ACT-F05 | Unit 4 Ready for Startup (RFSU) Milestone | 2026-09-10 → 2026-11-25 (+76d) | 2026-09-10 → 2026-11-25 (+76d) |
